# NCICBSecurityService

Schedule from MS Project, 2004-08-02 to 2005-03-07.
Home

## Calendars

- Standard: Mon-Fri 08:00-12:00, 13:00-17:00; Sat-Sun off.

## Resources

| Resource |
| --- |
| Vinay |
| Resource 1 |
| Brian |
| Kalpesh |
| Kunal |
| Eric |

## Schedule

| ID | WBS | Task | Duration | Start | Finish | Predecessors | Total slack | Free slack | Constraint | Resources | Work |
| --- | --- | --- | --- | --- | --- | --- | --- | --- | --- | --- | --- |
| 1 | 1 | **Security Module (Release One)** | 156d? | 2004-08-02 | 2005-03-07 |  | 0d |  |  |  | 4888h |
| 2 | 1.1 | **Inception** | 38d | 2004-08-02 | 2004-09-22 |  | 118d |  |  |  | 512h |
| 3 | 1.1.1 | Phase I Evaluation | 7d | 2004-08-02 | 2004-08-10 |  | 149d |  | start no earlier than 2004-08-02 | Vinay; Brian | 112h |
| 4 | 1.1.2 | Interview NCICB Team Leads | 12d | 2004-08-09 | 2004-08-24 |  | 123d | 5d | start no earlier than 2004-08-09 | Vinay; Brian | 192h |
| 5 | 1.1.3 | Scope and Vision Document | 10d | 2004-08-30 | 2004-09-10 |  | 126d |  | start no earlier than 2004-08-30 | Brian | 80h |
| 6 | 1.1.4 | Supplentary Specifications | 3d | 2004-09-01 | 2004-09-03 | 4 | 118d | 0d | start no earlier than 2004-09-01 | Vinay | 24h |
| 7 | 1.1.5 | Fuctional Specifications | 5d | 2004-09-06 | 2004-09-10 | 6 | 118d | 0d |  | Vinay | 40h |
| 8 | 1.1.6 | Use Case Model | 5d | 2004-09-13 | 2004-09-17 | 7 | 118d | 0d |  | Vinay | 40h |
| 9 | 1.1.7 | Identify Risk List | 3d | 2004-09-20 | 2004-09-22 | 8 | 118d |  |  | Kalpesh | 24h |
| 10 | 1.2 | **Elaboration** | 22d? | 2004-09-27 | 2004-10-26 |  | 94d |  |  |  | 416h |
| 11 | 1.2.1 | **Iteration I** | 13d | 2004-09-27 | 2004-10-13 |  | 103d |  |  |  | 152h |
| 12 | 1.2.1.1 | Level 1 - 2 Use Cases | 5d | 2004-09-27 | 2004-10-01 |  | 111d |  |  | Vinay | 40h |
| 13 | 1.2.1.2 | Risk List Priority | 3d | 2004-09-27 | 2004-09-29 |  | 113d |  |  | Vinay | 24h |
| 14 | 1.2.1.3 | Detailed Iteration Release Plan | 5d | 2004-09-27 | 2004-10-01 |  | 111d |  |  | Vinay; Brian | 80h |
| 15 | 1.2.1.4 | **Finalize Requirements** | 9d | 2004-10-01 | 2004-10-13 |  | 103d |  |  |  | 8h |
| 16 | 1.2.1.4.1 | Stakeholder Sign Off | 1d | 2004-10-01 | 2004-10-01 |  | 110d | 7d | start no earlier than 2004-10-01 |  |  |
| 17 | 1.2.1.4.2 | User Working Group Review | 1d | 2004-10-13 | 2004-10-13 | 16 | 103d |  | start no earlier than 2004-10-13 | Kalpesh | 8h |
| 18 | 1.2.2 | **Iteration II** | 16d? | 2004-10-05 | 2004-10-26 |  | 94d |  |  |  | 264h |
| 19 | 1.2.2.1 | Software Architecture Document | 15d | 2004-10-05 | 2004-10-25 |  | 94d | 0d | finish no earlier than 2004-10-25 | Vinay; Kunal | 240h |
| 20 | 1.2.2.2 | Architecture Review | 1d? | 2004-10-26 | 2004-10-26 | 19 | 94d |  |  | Brian; Kalpesh | 16h |
| 21 | 1.2.2.3 | Prioritize Risk List | 1d | 2004-10-26 | 2004-10-26 |  | 94d |  | start no earlier than 2004-10-26 | Vinay | 8h |
| 22 | 1.3 | **Construction** | 74d | 2004-10-18 | 2005-01-27 |  | 27d |  |  |  | 3576h |
| 23 | 1.3.1 | **Iteration I** | 19d | 2004-10-26 | 2004-11-19 |  | 69d |  |  |  | 312h |
| 24 | 1.3.1.1 | Iteration Plan | 1d | 2004-10-26 | 2004-10-26 |  | 94d |  | start no earlier than 2004-10-26 | Vinay; Kunal | 16h |

| ID | WBS | Task | Duration | Start | Finish | Predecessors | Total slack | Free slack | Constraint | Resources | Work |
| --- | --- | --- | --- | --- | --- | --- | --- | --- | --- | --- | --- |
| 25 | 1.3.1.2 | **Authentication** | 18d | 2004-10-27 | 2004-11-19 |  | 68d |  |  |  | 296h |
| 26 | 1.3.1.2.1 | **Design** | 4d | 2004-10-27 | 2004-11-01 |  | 82d |  |  |  | 56h |
| 27 | 1.3.1.2.1.1 | **Documentation** | 4d | 2004-10-27 | 2004-11-01 |  | 82d |  |  |  | 56h |
| 28 | 1.3.1.2.1.1.1 | Level 3 - 4 Use Cases | 0.5d | 2004-10-27 | 2004-10-27 |  | 90d | 0d | start no earlier than 2004-10-27 | Kunal; Vinay | 8h |
| 29 | 1.3.1.2.1.1.2 | Use Case Model | 0.5d | 2004-10-27 | 2004-10-27 | 28 | 90d | 0d | start no earlier than 2004-10-27 | Vinay; Kunal | 8h |
| 30 | 1.3.1.2.1.1.3 | Working Group Use Case Review | 1d | 2004-10-28 | 2004-10-28 | 29 | 90d | 0d |  | Kalpesh | 8h |
| 31 | 1.3.1.2.1.1.4 | UML Sequence Diagram | 1d | 2004-10-29 | 2004-10-29 | 30 | 90d | 0d |  | Kunal | 8h |
| 32 | 1.3.1.2.1.1.5 | UML Class Diagram | 1d | 2004-11-01 | 2004-11-01 | 31 | 90d |  |  | Vinay | 8h |
| 33 | 1.3.1.2.1.1.6 | UML Activity Diagram | 1d | 2004-10-29 | 2004-10-29 |  | 79d | 0d | start no earlier than 2004-10-29 | Vinay | 8h |
| 34 | 1.3.1.2.1.1.7 | Design Review | 1d | 2004-11-01 | 2004-11-01 | 33 | 79d | 0d |  | Brian | 8h |
| 35 | 1.3.1.2.2 | **Implementation** | 11d | 2004-11-01 | 2004-11-15 |  | 65d |  |  |  | 200h |
| 36 | 1.3.1.2.2.1 | Data Model Enhancement | 5d | 2004-11-01 | 2004-11-05 |  | 65d | 33d | start no earlier than 2004-11-01 | Vinay; Kalpesh | 80h |
| 37 | 1.3.1.2.2.2 | **JAAS Authentication Modules** | 10d | 2004-11-02 | 2004-11-15 |  | 76d |  |  |  | 120h |
| 38 | 1.3.1.2.2.2.1 | LDAP | 5d | 2004-11-02 | 2004-11-08 | 34 | 79d | 4d | start no earlier than 2004-11-02 | Kunal | 40h |
| 39 | 1.3.1.2.2.2.2 | RBDMS | 5d | 2004-11-08 | 2004-11-12 | 34 | 76d | 0d | finish no earlier than 2004-11-12 | Vinay | 40h |
| 40 | 1.3.1.2.2.2.3 | Junit Test Development | 4d | 2004-11-09 | 2004-11-12 |  | 76d | 0d | finish no earlier than 2004-11-12 | Eric | 32h |
| 41 | 1.3.1.2.2.2.4 | Code Reviews | 1d | 2004-11-15 | 2004-11-15 | 38, 39, 40 | 75d | 0d | finish no earlier than 2004-11-15 | Brian | 8h |
| 42 | 1.3.1.2.3 | **Unit Testing** | 4d | 2004-11-16 | 2004-11-19 |  | 76d |  |  |  | 40h |
| 43 | 1.3.1.2.3.1 | Perform Testing | 1d | 2004-11-16 | 2004-11-16 | 41 | 76d | 0d | start no earlier than 2004-11-15 | Eric | 8h |
| 44 | 1.3.1.2.3.2 | Evaluate Results | 1d | 2004-11-17 | 2004-11-17 | 43 | 76d | 0d | start no earlier than 2004-11-16 | Eric; Vinay | 16h |
| 45 | 1.3.1.2.3.3 | Integration Testing | 1d | 2004-11-18 | 2004-11-18 | 44 | 76d | 0d |  | Eric | 8h |
| 46 | 1.3.1.2.3.4 | User Working Group Review | 1d | 2004-11-19 | 2004-11-19 | 45 | 76d |  |  | Kalpesh | 8h |
| 47 | 1.3.2 | **Iteration II** | 38d | 2004-11-30 | 2005-01-20 |  | 27d | 0d |  |  | 408h |
| 48 | 1.3.2.1 | Iteration Plan | 1d | 2004-11-30 | 2004-11-30 |  | 60d | 0d | start no earlier than 2004-11-30 | Vinay | 8h |

| ID | WBS | Task | Duration | Start | Finish | Predecessors | Total slack | Free slack | Constraint | Resources | Work |
| --- | --- | --- | --- | --- | --- | --- | --- | --- | --- | --- | --- |
| 49 | 1.3.2.2 | **Authorization** | 37d | 2004-12-01 | 2005-01-20 |  | 27d |  |  |  | 400h |
| 50 | 1.3.2.2.1 | **Design** | 6d | 2004-12-01 | 2004-12-08 |  | 58d |  |  |  | 64h |
| 51 | 1.3.2.2.1.1 | **Documentation** | 6d | 2004-12-01 | 2004-12-08 |  | 58d |  |  |  | 64h |
| 52 | 1.3.2.2.1.1.1 | Level 3 - 4 Use Cases | 1d | 2004-12-01 | 2004-12-01 |  | 63d |  | start no earlier than 2004-12-01 | Vinay; Kunal | 16h |
| 53 | 1.3.2.2.1.1.2 | Use Case Model | 1d | 2004-12-01 | 2004-12-01 | 48 | 60d | 0d | start no earlier than 2004-11-22 | Kunal | 8h |
| 54 | 1.3.2.2.1.1.3 | User Working Group Review | 1d | 2004-12-02 | 2004-12-02 | 53 | 60d | 0d |  | Kalpesh | 8h |
| 55 | 1.3.2.2.1.1.4 | UML Sequence Diagram | 1d | 2004-12-03 | 2004-12-03 | 54 | 60d | 0d |  | Kunal | 8h |
| 56 | 1.3.2.2.1.1.5 | UML Class Diagram | 1d | 2004-12-06 | 2004-12-06 | 55 | 60d |  |  | Vinay | 8h |
| 57 | 1.3.2.2.1.1.6 | UML Activity Diagram | 1d | 2004-12-06 | 2004-12-06 |  | 59d | 0d | start no earlier than 2004-12-06 | Vinay | 8h |
| 58 | 1.3.2.2.1.1.7 | Design Review | 1d | 2004-12-07 | 2004-12-07 | 57 | 59d |  |  | Brian | 8h |
| 59 | 1.3.2.2.1.1.8 | UML Model for EVS | 2d | 2004-12-07 | 2004-12-08 |  | 58d |  | start no earlier than 2004-12-07 |  |  |
| 60 | 1.3.2.2.2 | **Implementation** | 26d | 2004-12-09 | 2005-01-13 |  | 32d |  |  |  | 288h |
| 61 | 1.3.2.2.2.1 | Authorization XML Schema | 10d | 2004-12-09 | 2004-12-22 |  | 48d |  | start no earlier than 2004-12-09 | Vinay; Brian | 160h |
| 62 | 1.3.2.2.2.2 | **Authorization API** | 16d | 2004-12-23 | 2005-01-13 |  | 32d |  |  |  | 128h |
| 63 | 1.3.2.2.2.2.1 | Enhance Phase I Object Model | 15d | 2004-12-23 | 2005-01-12 | 36 | 32d | 0d | start no earlier than 2004-12-23 | Vinay | 120h |
| 64 | 1.3.2.2.2.2.2 | Junit Test Development | 1d | 2005-01-13 | 2005-01-13 | 63 | 32d |  | finish no earlier than 2005-01-13 | Eric | 8h |
| 65 | 1.3.2.2.3 | **Unit Testing** | 5d | 2005-01-14 | 2005-01-20 |  | 27d |  |  |  | 48h |
| 66 | 1.3.2.2.3.1 | Unit Testing | 2d | 2005-01-14 | 2005-01-17 |  | 27d | 0d | start no earlier than 2005-01-14 | Eric | 16h |
| 67 | 1.3.2.2.3.2 | Evaluate Results | 1d | 2005-01-18 | 2005-01-18 | 66 | 27d | 0d |  | Vinay; Eric | 16h |
| 68 | 1.3.2.2.3.3 | Integration Testing | 1d | 2005-01-19 | 2005-01-19 | 67 | 27d | 0d |  | Vinay | 8h |
| 69 | 1.3.2.2.3.4 | User Working Group Review | 1d | 2005-01-20 | 2005-01-20 | 68 | 27d |  |  | Kalpesh | 8h |
| 70 | 1.3.3 | **Iteration III** | 28d | 2004-12-21 | 2005-01-27 |  | 27d |  |  |  | 208h |
| 71 | 1.3.3.1 | Iteration Plan | 1d | 2004-12-21 | 2004-12-21 |  | 39d | 0d | start no earlier than 2004-12-21 | Kunal | 8h |
| 72 | 1.3.3.2 | **Prototype (Reference Implementation)** | 27d | 2004-12-22 | 2005-01-27 |  | 27d |  |  |  | 200h |
| 73 | 1.3.3.2.1 | **Implementation** | 27d | 2004-12-22 | 2005-01-27 |  | 27d |  |  |  | 160h |
| 74 | 1.3.3.2.1.1 | **Demo Application** | 27d | 2004-12-22 | 2005-01-27 |  | 27d |  |  |  | 160h |
| 75 | 1.3.3.2.1.1.1 | Integrate Authentication | 5d | 2004-12-22 | 2004-12-28 | 71 | 39d | 0d | start no earlier than 2004-12-22 | Kunal | 40h |
| 76 | 1.3.3.2.1.1.2 | User Interface | 10d | 2004-12-29 | 2005-01-11 | 75 | 39d |  |  | Eric | 80h |
| 77 | 1.3.3.2.1.1.3 | Integrate Authorization | 5d | 2005-01-21 | 2005-01-27 | 47 | 27d |  |  | Kunal | 40h |

Notes:
- 76: Gap of a week exists. Evaluate again when Iteration 3 begins

| ID | WBS | Task | Duration | Start | Finish | Predecessors | Total slack | Free slack | Constraint | Resources | Work |
| --- | --- | --- | --- | --- | --- | --- | --- | --- | --- | --- | --- |
| 78 | 1.3.3.2.2 | **Documentation** | 5d | 2005-01-19 | 2005-01-25 |  | 29d |  |  |  | 40h |
| 79 | 1.3.3.2.2.1 | User Guide | 5d | 2005-01-19 | 2005-01-25 |  | 29d |  | start no earlier than 2005-01-19 | Vinay | 40h |
| 80 | 1.3.4 | **Iteration IV** | 69d | 2004-10-18 | 2005-01-20 |  | 32d |  |  | Brian | 2648h |
| 81 | 1.3.4.1 | Iteration Plan | 2d | 2004-10-18 | 2004-10-19 |  | 95d | 0d | start no earlier than 2004-10-18 | Brian | 16h |
| 82 | 1.3.4.2 | **User Provisioning** | 67d | 2004-10-20 | 2005-01-20 |  | 32d |  |  | Brian | 2080h |
| 83 | 1.3.4.2.1 | **Design** | 16d | 2004-10-20 | 2004-11-10 |  | 83d |  |  | Brian | 344h |
| 84 | 1.3.4.2.1.1 | **Documentation** | 16d | 2004-10-20 | 2004-11-10 |  | 83d |  |  | Brian | 216h |
| 85 | 1.3.4.2.1.1.1 | Level 3 - 4 Use Cases | 1d | 2004-10-27 | 2004-10-27 | 81 | 93d |  | start no earlier than 2004-10-27 | Brian | 8h |
| 86 | 1.3.4.2.1.1.2 | Use Case Model | 6d | 2004-10-20 | 2004-10-27 | 81 | 83d | 0d | finish no earlier than 2004-10-27 | Brian | 48h |
| 87 | 1.3.4.2.1.1.3 | Gather Requirements | 5d | 2004-10-28 | 2004-11-03 | 86 | 83d | 0d |  |  |  |
| 88 | 1.3.4.2.1.1.4 | Use Case Working Group Review | 1d | 2004-11-04 | 2004-11-04 | 87 | 83d | 0d |  |  |  |
| 89 | 1.3.4.2.1.1.5 | UML Sequence Diagram | 1d | 2004-11-05 | 2004-11-05 | 88 | 83d | 0d |  | Brian | 8h |
| 90 | 1.3.4.2.1.1.6 | UML Class Diagram | 1d | 2004-11-08 | 2004-11-08 | 89 | 83d | 0d |  | Brian | 8h |
| 91 | 1.3.4.2.1.1.7 | UML Activity Diagram | 1d | 2004-11-09 | 2004-11-09 | 90 | 83d | 0d |  | Brian | 8h |
| 92 | 1.3.4.2.1.1.8 | Design Review | 1d | 2004-11-10 | 2004-11-10 | 91 | 83d |  |  | Vinay | 8h |
| 93 | 1.3.4.2.2 | **Implementation** | 33d | 2004-11-04 | 2004-12-20 |  | 53d |  |  | Brian | 968h |
| 94 | 1.3.4.2.2.1 | Create Roles | 5d | 2004-11-04 | 2004-11-10 |  | 66d | 0d | start no earlier than 2004-11-04 | Brian | 40h |
| 95 | 1.3.4.2.2.2 | Modify Roles | 2d | 2004-11-11 | 2004-11-12 | 94 | 58d | 0d |  | Brian | 16h |
| 96 | 1.3.4.2.2.3 | Assign Roles to Users | 3d | 2004-11-15 | 2004-11-17 | 95 | 58d | 0d | start no earlier than 2004-11-11 | Brian | 24h |
| 97 | 1.3.4.2.2.4 | Create Privileges | 2d | 2004-11-18 | 2004-11-19 | 96 | 58d | 0d |  | Brian | 16h |
| 98 | 1.3.4.2.2.5 | Modify Privileges | 2d | 2004-11-22 | 2004-11-23 | 97 | 58d | 0d |  | Brian | 16h |
| 99 | 1.3.4.2.2.6 | Assign Privileges to Roles | 2d | 2004-11-24 | 2004-11-25 | 98 | 58d | 0d |  | Brian | 16h |
| 100 | 1.3.4.2.2.7 | Create Protection Elements | 2d | 2004-11-26 | 2004-11-29 | 99 | 58d | 0d |  | Brian | 16h |
| 101 | 1.3.4.2.2.8 | Modify Protection Elements | 2d | 2004-11-30 | 2004-12-01 | 100 | 58d | 0d |  | Brian | 16h |
| 102 | 1.3.4.2.2.9 | Create Protection Group | 2d | 2004-12-02 | 2004-12-03 | 101 | 58d | 0d |  | Brian | 16h |
| 103 | 1.3.4.2.2.10 | Modify Protection Group | 2d | 2004-12-06 | 2004-12-07 | 102 | 58d | 0d |  | Brian | 16h |
| 104 | 1.3.4.2.2.11 | Assign Protection Elements to Groups | 2d | 2004-12-08 | 2004-12-09 | 103 | 58d | 0d |  | Brian | 16h |
| 105 | 1.3.4.2.2.12 | Assign Protection Elements to Users | 2d | 2004-12-10 | 2004-12-13 | 104 | 58d | 0d |  | Brian | 16h |
| 106 | 1.3.4.2.2.13 | Assign Protection Group to User Roles | 2d | 2004-12-14 | 2004-12-15 | 105 | 58d |  |  | Brian | 16h |
| 107 | 1.3.4.2.2.14 | Web Interface | 20d | 2004-11-15 | 2004-12-10 |  | 55d | 0d | start no earlier than 2004-11-15 | Eric | 160h |
| 108 | 1.3.4.2.2.15 | Validation | 6d | 2004-12-13 | 2004-12-20 | 107 | 55d |  |  | Brian | 48h |
| 109 | 1.3.4.2.2.16 | Code Reviews | 32d | 2004-11-05 | 2004-12-20 |  | 52d | 0d | finish no earlier than 2004-12-20 | Vinay | 256h |

| ID | WBS | Task | Duration | Start | Finish | Predecessors | Total slack | Free slack | Constraint | Resources | Work |
| --- | --- | --- | --- | --- | --- | --- | --- | --- | --- | --- | --- |
| 110 | 1.3.4.2.3 | **Unit Testing** | 12d | 2004-12-21 | 2005-01-05 |  | 43d |  |  | Brian | 152h |
| 111 | 1.3.4.2.3.1 | Perform Testing | 3d | 2004-12-21 | 2004-12-23 | 109 | 52d |  | start no earlier than 2004-12-15 | Eric | 24h |
| 112 | 1.3.4.2.3.2 | Evaluate Results | 1d | 2005-01-03 | 2005-01-03 |  | 43d | 0d | start no earlier than 2005-01-03 | Brian; Eric | 16h |
| 113 | 1.3.4.2.3.3 | Integration Testing | 1d | 2005-01-04 | 2005-01-04 | 112 | 43d | 0d |  | Brian | 8h |
| 114 | 1.3.4.2.3.4 | User Working Group Review | 1d | 2005-01-05 | 2005-01-05 | 113 | 43d |  |  | Brian | 8h |
| 115 | 1.3.4.2.4 | User Guide | 10d | 2005-01-07 | 2005-01-20 |  | 32d |  | start no earlier than 2005-01-07 | Brian | 80h |
| 116 | 1.4 | **Transition** | 41d | 2005-01-10 | 2005-03-07 |  | 0d |  |  |  | 384h |
| 117 | 1.4.1 | **Iteration I** | 21.5d | 2005-01-10 | 2005-02-08 |  | 19.5d |  |  |  | 296h |
| 118 | 1.4.1.1 | System Integration Document | 12d | 2005-01-10 | 2005-01-25 |  | 21d | 0d | start no earlier than 2005-01-10 | Vinay | 96h |
| 119 | 1.4.1.2 | caCore Technical Guide | 8d | 2005-01-26 | 2005-02-04 | 118 | 21d |  |  |  |  |
| 120 | 1.4.1.3 | **Integration Pilot (Release One)** | 19.5d | 2005-01-12 | 2005-02-08 |  | 19.5d |  |  |  | 200h |
| 121 | 1.4.1.3.1 | **Client Implementation** | 9d | 2005-01-12 | 2005-01-24 |  | 30d |  |  |  | 72h |
| 122 | 1.4.1.3.1.1 | Design | 2d | 2005-01-12 | 2005-01-13 |  | 30d | 0d | start no earlier than 2005-01-12 | Vinay | 16h |
| 123 | 1.4.1.3.1.2 | Development | 5d | 2005-01-14 | 2005-01-20 | 122 | 30d | 0d |  | Kunal | 40h |
| 124 | 1.4.1.3.1.3 | Testing | 2d | 2005-01-21 | 2005-01-24 | 123 | 30d |  |  | Kunal | 16h |
| 125 | 1.4.1.3.2 | Integration Testing | 5d | 2005-01-25 | 2005-01-31 |  | 19.5d | 0d | start no earlier than 2005-01-25 | Vinay; Eric | 80h |
| 126 | 1.4.1.3.3 | Evaluate Results | 0.5d | 2005-02-01 | 2005-02-01 | 125 | 19.5d | 0d |  | Vinay; Eric | 8h |
| 127 | 1.4.1.3.4 | Apply Needed Enhancements | 5d | 2005-02-01 | 2005-02-08 | 126 | 19.5d |  |  | Kunal | 40h |
| 128 | 1.4.2 | **Iteration II** | 7d | 2005-02-15 | 2005-02-23 |  | 8d |  |  |  | 88h |
| 129 | 1.4.2.1 | Staging | 5d | 2005-02-15 | 2005-02-21 |  | 10d |  | start no earlier than 2005-02-15 | Vinay | 40h |
| 130 | 1.4.2.2 | Testing | 3d | 2005-02-21 | 2005-02-23 |  | 8d |  | start no earlier than 2005-02-21 | Vinay; Eric | 48h |
| 131 | 1.4.3 | caCore Release 3 | 1d | 2005-03-07 | 2005-03-07 |  | 0d |  | start no earlier than 2005-03-07 |  |  |
